# IRPF

Schedule from MS Project, 2011-04-26 to 2011-10-07, status date 2011-04-22, A marks actual dates.
School District U-46

## Calendars

- Standard: Mon-Fri 08:00-12:00, 13:00-17:00; Sat-Sun off.

## Resources

| Resource |
| --- |
| Melinda Barr |
| Infrastructure |
| Ana Schmitz |
| Salley Blom |
| Shelby Girard |
| Liz |
| Liz Sturrock |
| xxxxxx |

## Schedule

| ID | WBS | Task | Type | Duration | Start | Finish | Predecessors | Complete | Remaining | Actual start | Actual finish | Constraint | Resources | Work | Actual work |
| --- | --- | --- | --- | --- | --- | --- | --- | --- | --- | --- | --- | --- | --- | --- | --- |
| 1 | 1 | **Requirements Phase** |  | 1d? | 2011-04-26 A | 2011-04-26 |  | 100% |  |  | 2011-05-04 |  |  | 44h | 44h |
| 2 | 1.1 | Kick-off meeting |  | 1d | 2011-04-26 A | 2011-04-26 A |  | 100% |  |  |  | start no earlier than 2011-04-26 |  |  |  |
| 3 | 1.2 | **Gather requirements** |  | 2d | 2011-04-26 | 2011-04-27 A |  | 100% |  | 2011-04-27 |  |  |  | 12h | 12h |
| 4 | 1.2.1 | Meeing with IRPF |  | 0.5d | 2011-04-27 A | 2011-04-27 A | 2 | 100% |  |  |  |  | Melinda Barr; xxxxxx | 4h | 4h |
| 5 | 1.2.2 | Schedule regular intranet site set up meetings |  | 1d | 2011-04-27 A | 2011-04-27 A | 2 | 100% |  |  |  |  | xxxxxx | 8h | 8h |
| 6 | 1.3 | **Project Requirments Documentation** |  | 11.5d? | 2011-04-26 | 2011-05-11 |  | 100% |  | 2011-04-29 | 2011-05-04 |  |  | 32h | 32h |
| 7 | 1.3.1 | User Requirements Document |  | 3d | 2011-04-29 A | 2011-05-03 A | 3 | 100% |  |  |  | start no earlier than 2011-04-29 | xxxxxx; Melinda Barr | 24h | 24h |
| 8 | 1.3.2 | Get requirement sign-off |  | 1d | 2011-05-04 A | 2011-05-04 A | 7 | 100% |  |  |  | start no earlier than 2006-05-03 | xxxxxx | 8h | 8h |
| 9 | 2 | **Analysis Phase** |  | 1d? | 2011-04-26 | 2011-04-26 |  | 100% |  | 2011-04-27 | 2011-05-09 |  |  | 96h | 96h |
| 10 | 2.1 | Grant access to the IRPF databases on the test server in Notes |  | 1d | 2011-04-27 A | 2011-04-27 A | 2 | 100% |  |  |  |  | xxxxxx | 8h | 8h |
| 11 | 2.2 | **Investigate products against requirements list** |  | 1d? | 2011-04-26 | 2011-04-26 |  | 100% |  | 2011-05-04 | 2011-05-06 |  |  | 48h | 48h |
| 12 | 2.2.1 | Research modules |  | 3d | 2011-05-04 A | 2011-05-06 A | 7 | 100% |  |  |  |  | Melinda Barr | 24h | 24h |
| 13 | 2.2.2 | Research Themes |  | 3d | 2011-05-04 A | 2011-05-06 A | 7 | 100% |  |  |  |  | xxxxxx | 24h | 24h |
| 14 | 2.3 | **Site Structure** |  | 1d? | 2011-04-26 | 2011-04-26 |  | 100% |  | 2011-05-04 | 2011-05-09 |  |  | 32h | 32h |
| 15 | 2.3.1 | Determine sub sections |  | 2d | 2011-05-04 A | 2011-05-05 A | 7 | 100% |  |  |  |  | xxxxxx | 16h | 16h |
| 16 | 2.3.2 | Determine structure |  | 1d | 2011-05-06 A | 2011-05-06 A | 15 | 100% |  |  |  |  | xxxxxx | 8h | 8h |
| 17 | 2.3.3 | Determine Taxonomies |  | 1d | 2011-05-09 A | 2011-05-09 A | 16 | 100% |  |  |  |  | Melinda Barr | 8h | 8h |
| 18 | 2.4 | **Metircs** |  | 1d? | 2011-04-26 | 2011-04-26 |  | 100% |  | 2011-04-29 | 2011-04-29 |  |  | 8h | 8h |
| 19 | 2.4.1 | Omniture feasibility |  | 1d | 2011-04-29 A | 2011-04-29 A |  | 100% |  |  |  | start no earlier than 2011-04-29 | xxxxxx | 8h | 8h |
| 20 | 3 | **Implementation Phase** |  | 28d | 2011-04-26 A | 2011-06-02 |  | 99% | 0.25d |  |  |  |  | 546.8h | 542h |
| 21 | 3.1 | **Set up environment** |  | 14d | 2011-04-26 | 2011-05-13 |  | 99% | 0d | 2011-04-29 |  |  |  | 92h | 92h |
| 22 | 3.1.1 | **Development** |  | 1d? | 2011-04-26 | 2011-04-26 |  | 100% |  | 2011-04-29 | 2011-05-18 |  |  | 42h | 42h |
| 23 | 3.1.1.1 | Determine configuation |  | 0.25d | 2011-05-02 A | 2011-05-02 A |  | 100% |  |  |  | finish no earlier than 2011-05-02 | Infrastructure | 2h | 2h |
| 24 | 3.1.1.2 | set up OS (linux) |  | 0.25d | 2011-05-02 A | 2011-05-05 A |  | 100% |  |  |  | finish no earlier than 2011-05-05 | Infrastructure | 2h | 2h |
| 25 | 3.1.1.3 | Set up apache web server |  | 0.25d | 2011-05-02 A | 2011-05-05 A |  | 100% |  |  |  | finish no earlier than 2011-05-05 | Infrastructure | 2h | 2h |
| 26 | 3.1.1.4 | Configure robots.txt |  | 1d | 2011-05-02 A | 2011-05-02 A |  | 100% |  |  |  | start no earlier than 2011-05-02 | Infrastructure | 8h | 8h |
| 27 | 3.1.1.5 | Install php - 5.2.5 or higher |  | 0.25d | 2011-05-05 A | 2011-05-05 A |  | 100% |  |  |  | finish no earlier than 2011-05-05 | Infrastructure | 2h | 2h |
| 28 | 3.1.1.6 | set up database (MySql) MySQL 5.0.15 or higher |  | 0.25d | 2011-05-05 A | 2011-05-05 A |  | 100% |  |  |  | finish no earlier than 2011-05-05 | Infrastructure | 2h | 2h |
| 29 | 3.1.1.7 | Add PDO database extension for PHP |  | 0.25d | 2011-05-05 A | 2011-05-05 A |  | 100% |  |  |  | finish no earlier than 2011-05-05 | Infrastructure | 2h | 2h |
| 30 | 3.1.1.8 | Install Drupal 7 |  | 0.25d | 2011-05-06 A | 2011-05-06 A | 29 | 100% |  |  |  |  | Infrastructure | 2h | 2h |
| 31 | 3.1.1.9 | Create Certificate |  | 1d | 2011-05-17 A | 2011-05-18 A |  | 100% |  |  |  | finish no earlier than 2011-05-18 | xxxxxx | 8h | 8h |
| 32 | 3.1.1.10 | Set up internal and external DNS (?) |  | 0.25d | 2011-05-03 A | 2011-05-05 A |  | 100% |  |  |  | finish no earlier than 2011-05-05 | Infrastructure | 2h | 2h |
| 33 | 3.1.1.11 | Designate ports (?) |  | 0.25d | 2011-05-05 A | 2011-05-05 A |  | 100% |  |  |  | finish no earlier than 2011-05-05 | Infrastructure | 2h | 2h |
| 34 | 3.1.1.12 | install back up software |  | 1d | 2011-05-05 A | 2011-05-05 A |  | 100% |  |  |  | finish no earlier than 2011-05-05 | Infrastructure | 8h | 8h |
| 35 | 3.1.1.13 | Set up irpf e-mail address | milestone | 0d | 2011-04-29 A | 2011-04-29 A |  | 100% |  |  |  | start no earlier than 2011-04-29 | Infrastructure |  |  |

Notes:
- 3: Includes time to get input from different entities, district approval time, and
- 8: Get requirements Sign-off

| ID | WBS | Task | Type | Duration | Start | Finish | Complete | Remaining | Actual start | Actual finish | Total slack | Constraint | Resources | Work | Actual work |
| --- | --- | --- | --- | --- | --- | --- | --- | --- | --- | --- | --- | --- | --- | --- | --- |
| 36 | 3.1.2 | **Production** |  | 1d? | 2011-04-26 | 2011-04-26 | 99% | 0d? | 2011-05-13 |  |  |  |  | 50h | 50h |
| 37 | 3.1.2.1 | Notify infrastructure of production set-up deadline |  | 1d | 2011-05-13 A | 2011-05-13 A | 100% |  |  |  |  | start no earlier than 2011-05-13 | xxxxxx | 8h | 8h |
| 38 | 3.1.2.2 | Determine configuation |  | 0.25d | 2011-05-13 A | 2011-05-13 A | 100% |  |  |  |  | start no earlier than 2011-05-13 | Infrastructure | 2h | 2h |
| 39 | 3.1.2.3 | set up OS (linux) |  | 0.25d | 2011-05-13 A | 2011-05-13 A | 100% |  |  |  |  | start no earlier than 2011-05-13 | Infrastructure | 2h | 2h |
| 40 | 3.1.2.4 | Set up apache web server |  | 0.25d | 2011-05-13 A | 2011-05-13 A | 100% |  |  |  |  | start no earlier than 2011-05-13 | Infrastructure | 2h | 2h |
| 41 | 3.1.2.5 | Configure robots.txt |  | 1d | 2011-05-13 A | 2011-05-13 A | 100% |  |  |  |  | start no earlier than 2011-05-13 | Infrastructure | 8h | 8h |
| 42 | 3.1.2.6 | Install php - 5.2.5 or higher |  | 0.25d | 2011-05-13 A | 2011-05-13 A | 100% |  |  |  |  | start no earlier than 2011-05-13 | Infrastructure | 2h | 2h |
| 43 | 3.1.2.7 | set up database (MySql) MySQL 5.0.15 or higher |  | 0.25d | 2011-05-13 A | 2011-05-13 A | 100% |  |  |  |  | start no earlier than 2011-05-13 | Infrastructure | 2h | 2h |
| 44 | 3.1.2.8 | Add PDO database extension for PHP |  | 0.25d | 2011-05-13 A | 2011-05-13 A | 100% |  |  |  |  | start no earlier than 2011-05-13 | Infrastructure | 2h | 2h |
| 45 | 3.1.2.9 | Install Drupal 7 |  | 0.25d | 2011-05-13 A | 2011-05-13 A | 100% |  |  |  |  | start no earlier than 2011-05-13 | Infrastructure | 2h | 2h |
| 46 | 3.1.2.10 | Create Certificate |  | 1d | 2011-05-18 A | 2011-05-18 A | 100% |  |  |  |  | finish no earlier than 2011-05-18 | xxxxxx | 8h | 8h |
| 47 | 3.1.2.11 | Set up internal and external DNS |  | 0.25d | 2011-05-13 A | 2011-05-13 A | 100% |  |  |  |  | start no earlier than 2011-05-13 | Infrastructure | 2h | 2h |
| 48 | 3.1.2.12 | Set up external IP (?) |  | 0.25d | 2011-05-13 A | 2011-05-13 A | 100% |  |  |  |  | start no earlier than 2011-05-13 | Infrastructure | 2h | 2h |
| 49 | 3.1.2.13 | Designate ports (?) |  | 1d | 2011-05-13 A | 2011-05-13 A | 100% |  |  |  |  | start no earlier than 2011-05-13 | Infrastructure | 8h | 8h |
| 50 | 3.1.2.14 | install back up software | milestone | 0d | 2011-05-13 | 2011-05-13 |  |  |  |  | 106d | start no earlier than 2011-05-13 |  |  |  |
| 51 | 3.2 | **Design Page** |  | 119d? | 2011-04-26 | 2011-10-07 | 100% |  | 2011-04-29 | 2011-05-03 |  |  |  | 96h | 96h |
| 52 | 3.2.1 | Determine page/template layout |  | 3d | 2011-04-29 A | 2011-05-03 A | 100% |  |  |  |  | finish no earlier than 2011-05-03 | xxxxxx | 24h | 24h |
| 53 | 3.2.2 | Determine colors |  | 3d | 2011-04-29 A | 2011-05-03 A | 100% |  |  |  |  | finish no earlier than 2011-05-03 | xxxxxx | 24h | 24h |
| 54 | 3.2.3 | Create graphics |  | 3d | 2011-04-29 A | 2011-05-03 A | 100% |  |  |  |  | start no earlier than 2011-04-29 | xxxxxx | 24h | 24h |
| 55 | 3.2.4 | Screen Layout |  | 3d | 2011-04-29 A | 2011-05-03 A | 100% |  |  |  |  | start no earlier than 2011-04-29 | xxxxxx | 24h | 24h |
| 56 | 3.3 | **Build sub section of department sites** |  | 24d? | 2011-04-26 | 2011-05-27 | 100% |  | 2011-05-16 | 2011-05-17 |  |  |  | 78h | 78h |
| 57 | 3.3.1 | Home | manual | 2d | 2011-05-16 A | 2011-05-17 A | 100% |  |  |  |  |  | Melinda Barr; xxxxxx | 16h | 16h |
| 58 | 3.3.2 | About |  | 1.25d | 2011-05-16 A | 2011-05-17 A | 100% |  |  |  |  | start no earlier than 2011-05-16 | Melinda Barr; xxxxxx | 10h | 10h |
| 59 | 3.3.3 | Programs | manual | 2d | 2011-05-16 A | 2011-05-17 A | 100% |  |  |  |  |  | Melinda Barr; xxxxxx | 16h | 16h |
| 60 | 3.3.4 | Partners | manual | 2d | 2011-05-16 A | 2011-05-17 A | 100% |  |  |  |  |  | Melinda Barr; xxxxxx | 16h | 16h |
| 61 | 3.3.5 | News |  | 1.25d | 2011-05-16 A | 2011-05-17 A | 100% |  |  |  |  | start no earlier than 2011-05-16 | Melinda Barr; xxxxxx | 10h | 10h |
| 62 | 3.3.6 | Resources |  | 1.25d | 2011-05-16 A | 2011-05-17 A | 100% |  |  |  |  | start no earlier than 2011-05-16 | Melinda Barr; xxxxxx | 10h | 10h |

| ID | WBS | Task | Type | Duration | Start | Finish | Predecessors | Complete | Remaining | Actual start | Actual finish | Constraint | Resources | Work | Actual work |
| --- | --- | --- | --- | --- | --- | --- | --- | --- | --- | --- | --- | --- | --- | --- | --- |
| 63 | 3.4 | **Modules** |  | 1d? | 2011-04-26 | 2011-04-26 |  | 100% |  | 2011-05-09 | 2011-05-18 |  |  | 64h | 64h |
| 64 | 3.4.1 | Install Modules |  | 2d | 2011-05-09 A | 2011-05-10 A | 30 | 100% |  |  |  |  | Melinda Barr | 16h | 16h |
| 65 | 3.4.2 | Configure Modules |  | 2d | 2011-05-11 A | 2011-05-12 A | 64 | 100% |  |  |  |  | Melinda Barr | 16h | 16h |
| 66 | 3.4.3 | Assign Module Permissions |  | 2d | 2011-05-13 A | 2011-05-16 A | 65 | 100% |  |  |  |  | Melinda Barr | 16h | 16h |
| 67 | 3.4.4 | Customize modules |  | 2d | 2011-05-17 A | 2011-05-18 A | 66 | 100% |  |  |  |  | Melinda Barr | 16h | 16h |
| 68 | 3.5 | Build Front Page |  | 2d | 2011-04-26 A | 2011-04-27 A |  | 100% |  |  |  |  | Melinda Barr | 16h | 16h |
| 69 | 3.6 | **Theme** |  | 1d? | 2011-04-26 | 2011-04-26 |  | 100% |  | 2011-05-09 | 2011-05-25 |  |  | 104h | 104h |
| 70 | 3.6.1 | Install Theme |  | 1d | 2011-05-09 A | 2011-05-09 A |  | 100% |  |  |  | start no earlier than 2011-05-09 | xxxxxx | 8h | 8h |
| 71 | 3.6.2 | Configure Theme |  | 4d | 2011-05-10 A | 2011-05-13 A | 70 | 100% |  |  |  | start no earlier than 2011-04-29 | Melinda Barr | 32h | 32h |
| 72 | 3.6.3 | Customize theme |  | 8d | 2011-05-16 A | 2011-05-25 A | 71 | 100% |  |  |  | start no earlier than 2011-04-29 | Melinda Barr | 64h | 64h |
| 73 | 3.7 | **Users and Groups** |  | 49d? | 2011-04-26 | 2011-07-01 |  | 100% |  | 2011-05-02 | 2011-05-19 |  |  | 60h | 60h |
| 74 | 3.7.1 | Assign Permissions for groups |  | 1d | 2011-05-11 A | 2011-05-11 A | 64 | 100% |  |  |  |  | Melinda Barr | 8h | 8h |
| 75 | 3.7.2 | Determine users' group assignments |  | 1d | 2011-05-12 A | 2011-05-12 A | 74 | 100% |  |  |  |  | Melinda Barr | 8h | 8h |
| 76 | 3.7.3 | Assign Permissions for individual users |  | 1d | 2011-05-13 A | 2011-05-13 A | 75 | 100% |  |  |  |  | Melinda Barr | 8h | 8h |
| 77 | 3.7.4 | **User management forms** |  | 7d? | 2011-04-26 | 2011-05-04 |  | 100% |  | 2011-05-02 | 2011-05-19 |  |  | 36h | 36h |
| 78 | 3.7.4.1 | Determine account permissions |  | 0.5d? | 2011-05-02 A | 2011-05-02 A |  | 100% |  |  |  | start no earlier than 2011-05-02 | Melinda Barr; xxxxxx | 4h | 4h |
| 79 | 3.7.4.2 | Determine form fields |  | 1d | 2011-05-16 A | 2011-05-16 A | 76 | 100% |  |  |  |  | Melinda Barr | 8h | 8h |
| 80 | 3.7.4.3 | Determine form layout |  | 1d | 2011-05-17 A | 2011-05-17 A | 79 | 100% |  |  |  |  | Melinda Barr | 8h | 8h |
| 81 | 3.7.4.4 | Determine database fields (?) |  | 1d | 2011-05-18 A | 2011-05-18 A | 80 | 100% |  |  |  |  | Melinda Barr | 8h | 8h |
| 82 | 3.7.4.5 | Build forms |  | 1d | 2011-05-19 A | 2011-05-19 A | 81 | 100% |  |  |  |  | Melinda Barr | 8h | 8h |
| 83 | 3.8 | **Content Migration** |  | 1d? | 2011-04-26 A | 2011-04-26 |  | 77% | 0.23d? |  |  |  |  | 20.8h | 16h |
| 84 | 3.8.1 | **Take inventory of content** |  | 1d? | 2011-04-26 | 2011-04-26 |  | 100% |  | 2011-04-29 | 2011-04-29 |  |  | 8h | 8h |
| 85 | 3.8.1.1 | Determine form permissions |  | 1d | 2011-04-29 A | 2011-04-29 A |  | 100% |  |  |  | start no earlier than 2011-04-29 | xxxxxx | 8h | 8h |
| 86 | 3.8.2 | Migrate HTML pages | milestone | 0d | 2011-05-20 A | 2011-05-24 A |  | 100% |  |  |  | start no earlier than 2011-05-20 | xxxxxx |  |  |
| 87 | 3.8.3 | Migrate Graphics |  | 1d | 2011-05-20 A | 2011-05-20 A |  | 100% |  |  |  | start no earlier than 2011-05-20 | xxxxxx; Melinda Barr | 8h | 8h |
| 88 | 3.8.4 | Upload Forms and pdfs | manual | 0.6d | 2011-04-26 | 2011-05-03 |  |  |  |  |  |  | xxxxxx | 4.8h |  |

| ID | WBS | Task | Type | Duration | Start | Finish | Predecessors | Complete | Remaining | Actual start | Actual finish | Total slack | Free slack | Constraint | Resources | Work | Actual work |
| --- | --- | --- | --- | --- | --- | --- | --- | --- | --- | --- | --- | --- | --- | --- | --- | --- | --- |
| 89 | 3.9 | **Search** |  | 1d? | 2011-04-26 | 2011-04-26 |  | 100% |  | 2011-05-12 | 2011-05-13 |  |  |  |  | 16h | 16h |
| 90 | 3.9.1 | Create Collection |  | 1d? | 2011-05-12 A | 2011-05-12 A |  | 100% |  |  |  |  |  | start no earlier than 2011-05-12 | Melinda Barr | 8h | 8h |
| 91 | 3.9.2 | Create Display Template |  | 1d? | 2011-05-13 A | 2011-05-13 A | 90 | 100% |  |  |  |  |  |  | Melinda Barr | 8h | 8h |
| 92 | 4 | **Testing Phase** |  | 1d? | 2011-04-26 | 2011-04-26 |  | 71% | 0.29d? | 2011-05-16 |  |  |  |  |  | 152h | 84.8h |
| 93 | 4.1 | Unit Testing |  | 3d | 2011-05-16 A | 2011-05-18 A | 65, 71 | 100% |  |  |  |  |  | start no earlier than 2011-05-09 | Melinda Barr; xxxxxx | 24h | 24h |
| 94 | 4.2 | System testing |  | 7.9d | 2011-05-30 A | 2011-06-08 | 93 | 48% | 4.1d |  |  | 87.1d |  | finish no earlier than 2011-06-02 | xxxxxx; Melinda Barr | 96h | 30.4h |
| 95 | 4.3 | Bug fixes |  | 4d | 2011-05-30 A | 2011-06-02 |  | 95% | 0.2d |  |  | 91d |  | start no earlier than 2011-05-30 | Melinda Barr | 32h | 30.4h |
| 96 | 5 | **Deployment Phase** |  | 31d? | 2011-04-26 | 2011-06-07 |  | 42% | 18.08d? | 2011-05-05 |  |  |  |  |  | 64h | 32h |
| 97 | 5.1 | **Misc** |  | 1d? | 2011-04-26 | 2011-04-26 |  | 30% | 0.7d? | 2011-05-05 |  |  |  |  |  | 56h | 24h |
| 98 | 5.1.1 | Work with IRPF to publicize |  | 2d? | 2011-05-05 | 2011-05-09 | 8 |  |  |  |  | -8.5d | 0d |  | xxxxxx | 16h |  |
| 99 | 5.1.2 | Prepare deployment checklist |  | 2d | 2011-05-19 A | 2011-05-20 |  | 75% | 0.5d |  |  | 100d |  | finish no earlier than 2011-05-20 | Melinda Barr; Infrastructure | 32h | 24h |
| 100 | 5.1.3 | DNS cut-over |  | 1d | 2011-06-02 | 2011-06-02 |  |  |  |  |  | 91d |  | start no earlier than 2011-06-02 | Infrastructure | 8h |  |
| 101 | 5.2 | **Training** |  | 11d? | 2011-04-26 | 2011-05-10 |  | 100% |  | 2011-05-17 | 2011-05-18 |  |  |  |  | 8h | 8h |
| 102 | 5.2.1 | Plan Training |  | 1d | 2011-05-17 A | 2011-05-17 A |  | 100% |  |  |  |  |  | finish no earlier than 2011-05-17 | xxxxxx; Melinda Barr | 8h | 8h |
| 103 | 5.2.2 | Conduct Training | milestone | 0d | 2011-05-17 A | 2011-05-18 A |  | 100% |  |  |  |  |  | start no earlier than 2011-05-17 | xxxxxx; Melinda Barr |  |  |
